# Projeto EzMart

How a schedule from MS Project changed from version to version. A marks actual dates.

## Version 1 (data date 2017-02-01, saved 2018-11-08)

Note of the change: EAP

| ID | WBS | Task | Duration | Start | Finish | Predecessors | Complete | Total float | Constraint |
| --- | --- | --- | --- | --- | --- | --- | --- | --- | --- |
| 1 | FAI-PFC-3 | **FASE I** | 37d | 2018-02-19 A | 2018-04-07 |  | 71% |  |  |
| 2 | FAI-PFC-3.1 | **Comunicação** | 15d | 2018-02-19 A | 2018-03-09 |  | 82% |  |  |
| 3 | FAI-PFC-3.1.1 | **Requisitos Funcionais** | 2d | 2018-03-03 A | 2018-03-06 A |  | 100% |  |  |
| 4 |  | Revisar Requisitos Funcionais | 1d | 2018-03-03 A | 2018-03-05 A |  | 100% |  | start no earlier than 2018-03-03 |
| 5 |  | Alterar Requisitos Funcionais | 1d | 2018-03-05 A | 2018-03-06 A |  | 100% |  |  |
| 6 | FAI-PFC-3.1.2 | **Requisitos Não Funcionais** | 3d | 2018-02-19 A | 2018-02-22 |  | 71% | 12d |  |
| 7 |  | Elaborar requisitos não funcionais | 1d | 2018-02-19 A | 2018-02-20 A |  | 100% |  |  |
| 8 |  | Revisar requisitos não funcionais | 1d | 2018-02-20 A | 2018-02-21 |  | 38% | 13d |  |
| 9 |  | Alterar requisitos não funcionais | 1d | 2018-02-21 A | 2018-02-22 | 5 | 75% | 12d |  |
| 10 | FAI-PFC-3.2 | **Modelagem** | 12d | 2018-02-22 | 2018-03-09 A |  | 100% |  |  |
| 11 | FAI-PFC-3.2.1 | **Casos de Uso** | 5d | 2018-02-26 A | 2018-03-02 |  | 100% |  |  |
| 12 |  | Criar diagrama dos Casos de Uso | 1d | 2018-02-26 A | 2018-02-27 A |  | 100% |  |  |
| 13 |  | Revisar diagrama dos Casos de Uso | 1.88d | 2018-02-28 A | 2018-03-01 A | 12 | 100% |  | finish no earlier than 2018-03-01 |
| 14 |  | Alterar diagrama dos Casos de Uso | 1d | 2018-02-28 A | 2018-03-01 A | 13 | 100% |  |  |
| 15 | FAI-PFC-3.2.2 | **MER** | 6d | 2018-03-02 A | 2018-03-09 A | 14 | 100% |  |  |
| 16 |  | Criar Modelo Entidade-Relacionamento | 2d | 2018-03-02 A | 2018-03-05 A | 14 | 100% |  |  |
| 17 |  | Revisar Modelo Entidade-Relacionamento | 1d | 2018-03-06 A | 2018-03-07 A | 16 | 100% |  |  |
| 18 |  | Alterar Modelo Entidade-Relacionamento | 1d | 2018-03-08 A | 2018-03-09 A | 17 | 100% |  |  |
| 19 | FAI-PFC-3.3 | **Documentação** | 19d | 2018-03-07 A | 2018-04-03 |  | 90% |  |  |
| 20 | FAI-PFC-3.3.1 | **Introdução** | 3d | 2018-03-07 A | 2018-03-12 A |  | 100% |  |  |
| 21 |  | Elaborar Capítulo 1 | 1d | 2018-03-07 A | 2018-03-08 A |  | 100% |  | finish no earlier than 2014-03-27 |
| 22 |  | Revisar Capítulo 1 | 1d | 2018-03-08 A | 2018-03-09 A | 21 | 100% |  | start no earlier than 2014-03-28 |
| 23 |  | Alterar Capítulo 1 | 1d | 2018-03-09 A | 2018-03-12 A | 22 | 100% |  | start no earlier than 2014-03-31 |
| 24 | FAI-PFC-3.3.1 | **Revisão Bibliográfica** | 5d | 2018-03-12 A | 2018-03-19 |  | 83% |  |  |
| 25 |  | Elaborar Capítulo 2 | 1d | 2018-03-12 A | 2018-03-13 A |  | 100% |  | finish no earlier than 2014-03-27 |
| 26 |  | Revisar Capítulo 2 | 1d | 2018-03-14 A | 2018-03-15 | 25 | 50% | 175.88d | finish no earlier than 2018-03-15 |
| 27 |  | Alterar Capítulo 2 | 1d | 2018-03-16 A | 2018-03-19 A | 26 | 100% |  | start no earlier than 2014-03-31 |
| 28 | FAI-PFC-3.3.1 | **Objetivo** | 3d | 2018-03-19 A | 2018-03-22 |  | 94% |  |  |
| 29 |  | Elaborar Capítulo 3 | 1d | 2018-03-19 A | 2018-03-20 A |  | 100% |  | finish no earlier than 2014-03-27 |
| 30 |  | Revisar Capítulo 3 | 1d | 2018-03-20 A | 2018-03-21 A | 29 | 100% |  | start no earlier than 2014-03-28 |
| 31 |  | Alterar Capítulo 3 | 1d | 2018-03-20 A | 2018-03-21 | 30 | 83% | 171.88d | start no earlier than 2014-03-31 |
| 32 | FAI-PFC-3.3.2 | **Gerência de Projeto** | 3d | 2018-03-22 A | 2018-03-27 A |  | 100% |  |  |
| 33 |  | Elaborar Capítulo 4 | 1d | 2018-03-22 A | 2018-03-23 A |  | 100% |  | finish no earlier than 2014-04-01 |
| 34 |  | Revisar Capítulo 4 | 1d | 2018-03-23 A | 2018-03-26 A | 33 | 100% |  | finish no earlier than 2014-04-02 |
| 35 |  | Alterar Capítulo 4 | 1d | 2018-03-26 A | 2018-03-27 A | 34 | 100% |  | finish no earlier than 2014-04-03 |
| 36 | FAI-PFC-3.3.3 | **Especificação e Análise dos Requisitos** | 3d | 2018-03-28 A | 2018-04-02 |  | 72% |  |  |
| 37 |  | Elaborar Capítulo 5 | 1d | 2018-03-28 A | 2018-03-29 A |  | 100% |  |  |
| 38 |  | Revisar Capítulo 5 | 1d | 2018-03-30 A | 2018-04-02 | 37 | 50% | -0.33d |  |
| 39 |  | Alterar Capítulo 5 | 1d | 2018-03-30 A | 2018-04-02 | 38 | 67% | 0d |  |
| 40 | FAI-PFC-3.3 | **Construção** | 21d | 2018-03-09 A | 2018-04-07 |  | 52% | 158.88d |  |
| 41 | FAI-PFC-3.3.1 | **Banco de Dados** | 4d | 2018-03-09 A | 2018-03-15 A |  | 100% |  |  |
| 42 |  | Criar Banco de Dados | 1d | 2018-03-09 A | 2018-03-12 A | 18 | 100% |  | finish no earlier than 2014-03-27 |
| 43 |  | Revisar Banco de Dados | 1d | 2018-03-13 A | 2018-03-14 A | 42 | 100% |  | start no earlier than 2014-03-28 |
| 44 |  | Alterar Banco de Dados | 1d | 2018-03-14 A | 2018-03-15 A | 43 | 100% |  | start no earlier than 2014-03-31 |
| 45 | FAI-PFC-3.3.1 | **Código Front-End** | 17d | 2018-03-15 A | 2018-04-07 |  | 36% |  |  |
| 46 |  | Codificar Front-End | 6d | 2018-03-15 A | 2018-03-23 |  | 26% | 11d |  |
| 47 |  | Revisar código Front-End | 4d | 2018-03-23 A | 2018-03-29 | 46 | 40% | 164.38d | start no earlier than 2014-03-28 |
| 48 |  | Alterar código Front-End | 3d | 2018-04-04 A | 2018-04-07 | 47 | 50% | 158.88d | start no earlier than 2014-03-31 |
| 49 | FAI-PFC-3.3.1 | **Código Back-End** | 14d | 2018-03-16 | 2018-04-05 |  | 57% |  |  |
| 50 | FAI-PFC-3.3.1.1 | **Criar código Back-End** | 14d | 2018-03-15 A | 2018-04-04 |  | 100% |  |  |
| 51 |  | RF 04 – Cadastrar consumidor | 1d | 2018-03-15 A | 2018-03-16 A |  | 100% |  |  |
| 52 |  | RF 05 – Cadastrar estabelecimento | 1d | 2018-03-16 A | 2018-03-19 A |  | 100% |  |  |
| 53 |  | RF 01 – Realizar autenticação | 1d | 2018-03-19 A | 2018-03-20 A | 51, 52 | 100% |  |  |
| 54 |  | Revisar código Back-End | 7.25d | 2018-03-26 A | 2018-04-04 | 50 | 41% | 160.12d | start no earlier than 2014-03-28 |
| 55 |  | Alterar código Back-End | 3d | 2018-03-30 A | 2018-04-04 | 54 | 50% | 161.88d | start no earlier than 2014-03-31 |
| 56 |  | Fase I - Término | 0d | 2018-04-07 | 2018-04-07 |  |  | 158.88d | start no earlier than 2018-04-07 |
| 57 | FAI-PFC-6 | **FASE 2** | 58d | 2018-04-12 | 2018-07-02 |  | 64% |  |  |
| 58 | FAI-PFC-6.4 | **Documentação** | 14d | 2018-04-12 A | 2018-05-02 A | 56 | 100% |  |  |
| 59 | FAI-PFC-6.4.4 | **Correção Fase 1** | 5d | 2018-04-12 A | 2018-04-19 A | 56 | 100% |  |  |
| 60 |  | Corrigir texto do Capítulo 1 | 1d | 2018-04-12 A | 2018-04-13 A | 56 | 100% |  |  |
| 61 |  | Corrigir texto do Capítulo 2 | 1d | 2018-04-13 A | 2018-04-16 A | 60 | 100% |  |  |
| 62 |  | Corrigir texto do Capítulo 3 | 1d | 2018-04-16 A | 2018-04-17 A | 61 | 100% |  |  |
| 63 |  | Corrigir texto do Capítulo 4 | 1d | 2018-04-17 A | 2018-04-18 A | 62 | 100% |  |  |
| 64 |  | Corrigir texto do Capítulo 5 | 1d | 2018-04-18 A | 2018-04-19 A | 63 | 100% |  | start no earlier than 2018-04-18 |
| 65 | FAI-PFC-6.4.5 | **Gerência de Projetos** | 3d | 2018-04-19 A | 2018-04-24 A |  | 100% |  |  |
| 66 |  | Criar Gestão dos Riscos | 1d | 2018-04-19 A | 2018-04-20 A |  | 100% |  |  |
| 67 |  | Criar Gestão da Qualidade | 1d | 2018-04-20 A | 2018-04-23 A | 66 | 100% |  |  |
| 68 |  | Criar Gestão da Integração | 1d | 2018-04-23 A | 2018-04-24 A | 67 | 100% |  |  |
| 69 | FAI-PFC-6.4.6 | **Especificação e Análise dos Requisitos** | 1d | 2018-04-24 A | 2018-04-25 A |  | 100% |  |  |
| 70 |  | Criar Métricas para Estimativa do Esforço | 1d | 2018-04-24 A | 2018-04-25 A |  | 100% |  |  |

| ID | WBS | Task | Duration | Start | Finish | Predecessors | Complete | Total float | Constraint |
| --- | --- | --- | --- | --- | --- | --- | --- | --- | --- |
| 71 | FAI-PFC-6.4.6 | **Revisão do documento** | 6d | 2018-04-24 A | 2018-05-02 A | 68 | 100% |  |  |
| 72 |  | Revisar documento | 5d | 2018-04-24 A | 2018-05-01 A | 68 | 100% |  |  |
| 73 |  | Alterar documento | 1d | 2018-05-01 A | 2018-05-02 A | 72 | 100% |  |  |
| 74 | FAI-PFC-6.5 | **Modelagem** | 13d | 2018-04-12 A | 2018-05-01 A |  | 100% |  |  |
| 75 | FAI-PFC-6.5.4 | **Correção dos Casos de Uso** | 3d | 2018-04-12 A | 2018-04-17 A |  | 100% |  |  |
| 76 |  | Corrigir Casos de Uso | 1d | 2018-04-12 A | 2018-04-13 A |  | 100% |  |  |
| 77 |  | Revisar correção de Casos de Uso | 1d | 2018-04-13 A | 2018-04-16 A | 76 | 100% |  |  |
| 78 |  | Alterar correção dos Casos de Uso | 1d | 2018-04-16 A | 2018-04-17 A | 77 | 100% |  |  |
| 79 | FAI-PFC-6.5.5 | **Correção do MER** | 3d | 2018-04-17 A | 2018-04-20 A | 78 | 100% |  |  |
| 80 |  | Corrigir MER | 1d | 2018-04-17 A | 2018-04-18 A | 78 | 100% |  |  |
| 81 |  | Revisar correção do MER | 1d | 2018-04-18 A | 2018-04-19 A | 80 | 100% |  |  |
| 82 |  | Alterar correção do MER | 1d | 2018-04-19 A | 2018-04-20 A | 81 | 100% |  |  |
| 83 | FAI-PFC-6.5.6 | **Visão Estrutural** | 2d | 2018-04-20 A | 2018-04-24 A |  | 100% |  |  |
| 84 |  | Criar Diagrama de Pacotes | 1d | 2018-04-20 A | 2018-04-23 A | 82 | 100% |  |  |
| 85 |  | Criar Diagrama de Classes | 1d | 2018-04-23 A | 2018-04-24 A | 84 | 100% |  |  |
| 86 |  | Criar Diagrama de Objetos | 1d | 2018-04-20 A | 2018-04-23 A | 85 | 100% |  |  |
| 87 | 3.2.4 | **Visão Comportamental** | 2d | 2018-04-20 A | 2018-04-24 A |  | 100% |  |  |
| 88 |  | Criar Projeto das Interações | 1d | 2018-04-20 A | 2018-04-23 A | 86 | 100% |  |  |
| 89 |  | Criar Diagrama de Atividades | 1d | 2018-04-23 A | 2018-04-24 A | 88 | 100% |  |  |
| 90 | 3.2.5 | **Visão dos Dados** | 2d | 2018-04-24 A | 2018-04-26 A |  | 100% |  |  |
| 91 |  | Criar Modelo Operacional | 1d | 2018-04-24 A | 2018-04-25 A | 89 | 100% |  |  |
| 92 |  | Criar Dicionário de Dados do Modelo Operacional | 1d | 2018-04-25 A | 2018-04-26 A | 91 | 100% |  |  |
| 93 | 3.2.6 | **Projeto de Sistemas Distribuídos** | 2d | 2018-04-27 A | 2018-05-01 A |  | 100% |  |  |
| 94 |  | Criar Procedimentos para Tratamento dos Desafios | 1d | 2018-04-27 A | 2018-04-30 A | 92 | 100% |  |  |
| 95 |  | Descrever tecnologias e Arquiteturas de Distribuição | 1d | 2018-04-30 A | 2018-05-01 A | 94 | 100% |  |  |
| 96 | FAI-PFC-6.6 | **Construção** | 66d | 2018-04-02 A | 2018-06-30 |  | 45% | 97.88d |  |
| 97 | FAI-PFC-6.6.4 | **Correção do Banco de Dados** | 3d | 2018-04-12 A | 2018-04-17 A |  | 100% |  |  |
| 98 |  | Corrigir Banco de Dados | 1d | 2018-04-12 A | 2018-04-13 A |  | 100% |  | finish no earlier than 2014-03-27 |
| 99 |  | Revisar correção do Banco de Dados | 1d | 2018-04-13 A | 2018-04-16 A | 98 | 100% |  | start no earlier than 2014-03-28 |
| 100 |  | Alterar correção do Banco de Dados | 1d | 2018-04-16 A | 2018-04-17 A | 99 | 100% |  | start no earlier than 2014-03-31 |
| 101 | FAI-PFC-6.6.5 | **Código Front-End** | 59d | 2018-04-02 A | 2018-06-21 |  | 26% |  |  |
| 102 |  | Codificar Front-End | 15d | 2018-04-02 A | 2018-04-20 |  | 33% |  |  |
| 103 |  | Revisar código Front-End | 5d | 2018-05-25 A | 2018-06-01 | 102 | 27% | 110.21d | finish no earlier than 2014-04-02 |
| 104 |  | Alterar código Front-End | 10d | 2018-06-01 A | 2018-06-15 | 103 | 13% | 108.88d | finish no earlier than 2014-04-03 |
| 105 | FAI-PFC-6.6.6 | **Código Back-End** | 55d | 2018-04-16 | 2018-06-30 |  | 63% |  |  |
| 106 | FAI-PFC-6.6.6.4 | **Criar código Back-End** | 7d | 2018-04-02 A | 2018-04-10 |  | 99% | 0d |  |
| 107 |  | RF 02 – Recuperar senha | 2d | 2018-04-02 A | 2018-04-04 A |  | 100% |  |  |
| 108 |  | RF 03 – Alterar senha | 2d | 2018-04-03 A | 2018-04-05 A |  | 100% |  |  |
| 109 |  | RF 06 – Editar perfil do consumidor | 2d | 2018-04-04 A | 2018-04-06 A |  | 100% |  |  |
| 110 |  | RF 17 – Editar perfil do estabelecimento | 2d | 2018-04-05 A | 2018-04-07 A |  | 100% |  |  |
| 111 |  | RF 24 – Gerenciar cadastro de produto | 2d | 2018-04-07 A | 2018-04-10 A |  | 100% |  |  |
| 112 |  | Revisar código Back-End | 5d | 2018-06-11 A | 2018-06-18 | 106 | 53% | 3d |  |
| 113 |  | Alterar código Back-End | 10d | 2018-06-18 A | 2018-06-30 | 112 | 30% | 0d |  |
| 114 |  | Fase 2 - Término | 0d | 2018-06-30 | 2018-06-30 | 113 |  | 97.88d | start no earlier than 2018-06-30 |
| 115 | FAI-PFC-8 | **FASE 3** | 52d | 2018-06-30 A | 2018-09-08 | 113 | 46% |  |  |
| 116 | FAI-PFC-8.7 | **Documentação** | 17d | 2018-06-30 A | 2018-07-24 |  | 56% | 34.88d |  |
| 117 | FAI-PFC-8.7.7 | **Correção Fase 2** | 5d | 2018-06-30 A | 2018-07-06 |  | 75% |  |  |
| 118 |  | Corrigir texto do Capítulo 2 | 1d | 2018-06-30 A | 2018-07-02 | 113 | 38% | 3.38d |  |
| 119 |  | Corrigir texto do Capítulo 3 | 1d | 2018-07-02 A | 2018-07-03 | 118 | 38% | 3d |  |
| 120 |  | Corrigir texto do Capítulo 4 | 1d | 2018-07-03 A | 2018-07-04 A | 119 | 100% |  |  |
| 121 |  | Corrigir texto do Capítulo 5 | 1d | 2018-07-04 A | 2018-07-05 A | 120 | 100% |  |  |
| 122 |  | Corrigir texto do Capítulo 6 | 1d | 2018-07-05 A | 2018-07-06 A | 119 | 100% |  |  |
| 123 | FAI-PFC-8.7.8 | **Arquitetura e Projeto** | 6d | 2018-07-06 A | 2018-07-16 |  | 75% |  |  |
| 124 |  | Criar Estrutura fisica do banco de dados | 1d | 2018-07-06 A | 2018-07-09 |  | 38% | 4.38d |  |
| 125 |  | Escrever sobre Design Patterns | 1d | 2018-07-09 A | 2018-07-10 | 124 | 38% | 4d |  |
| 126 |  | Escrever sobre Convenções e guias para a codificação | 1d | 2018-07-10 A | 2018-07-11 A | 125 | 100% |  |  |
| 127 |  | Escrever sobre Aspectos visuais da interface do usuário | 1d | 2018-07-11 A | 2018-07-12 A | 126 | 100% |  |  |
| 128 |  | Escrever sobre Heuristica e usabilidade | 1d | 2018-07-13 A | 2018-07-16 A | 127 | 100% |  | start no earlier than 2018-07-13 |
| 129 | FAI-PFC-8.7.9 | **Revisão do documento** | 6d | 2018-07-16 A | 2018-07-24 | 128 | 25% | 34.88d |  |
| 130 |  | Revisar documento | 4d | 2018-07-16 A | 2018-07-20 | 128 | 33% | 35.04d |  |
| 131 |  | Alterar documento | 2d | 2018-07-20 A | 2018-07-24 | 130 | 8% | 34.88d |  |
| 132 | FAI-PFC-8.8 | **Modelagem** | 4d | 2018-07-27 A | 2018-08-02 A |  | 100% |  |  |
| 133 | FAI-PFC-8.8.7 | **Casos de uso** | 2d | 2018-07-27 A | 2018-07-31 A |  | 100% |  |  |
| 134 |  | Revisar Casos de uso | 1d | 2018-07-27 A | 2018-07-30 A |  | 100% |  |  |
| 135 |  | Alterar Casos de uso | 1d | 2018-07-30 A | 2018-07-31 A | 134 | 100% |  |  |
| 136 | FAI-PFC-8.8.8 | **Correção MER** | 2d | 2018-07-31 A | 2018-08-02 A |  | 100% |  |  |
| 137 |  | Revisar Modelo Entidade Relacionamento | 1d | 2018-07-31 A | 2018-08-01 A | 135 | 100% |  |  |
| 138 |  | Alterar Modelo Entidade Relacionamento | 1d | 2018-08-01 A | 2018-08-02 A | 137 | 100% |  |  |
| 139 | FAI-PFC-8.9 | **Construção** | 51d | 2018-07-02 A | 2018-09-08 |  | 40% |  |  |
| 140 | FAI-PFC-8.9.7 | **Código Front-End** | 49d | 2018-07-02 A | 2018-09-07 |  | 37% | 1.88d |  |

| ID | WBS | Task | Duration | Start | Finish | Predecessors | Complete | Total float | Constraint |
| --- | --- | --- | --- | --- | --- | --- | --- | --- | --- |
| 141 |  | Codificar código Front-End | 33d | 2018-07-02 A | 2018-08-16 |  | 46% | 4.63d |  |
| 142 |  | Revisar código Front-End | 5d | 2018-08-16 A | 2018-08-23 | 141 | 20% | 3.63d | start no earlier than 2014-03-28 |
| 143 |  | Alterar código Front-End | 11d | 2018-08-23 A | 2018-09-07 | 142 | 16% | 1.88d | start no earlier than 2014-03-31 |
| 144 | FAI-PFC-8.9.8 | **Código Back-End** | 50d | 2018-07-02 A | 2018-09-07 |  | 48% |  |  |
| 145 | FAI-PFC-8.9.8.7 | **Codificar código Back-End** | 28d | 2018-07-02 A | 2018-08-09 |  | 100% |  |  |
| 146 |  | RF 10 – Gerenciar lista de compras | 1d | 2018-07-02 A | 2018-07-03 A |  | 100% |  |  |
| 147 |  | RF 16 – Gerenciar cadastro de promoção | 1d | 2018-07-03 A | 2018-07-04 A |  | 100% |  |  |
| 148 |  | RF 18 – Gerenciar preço de produto | 1d | 2018-07-05 A | 2018-07-06 A |  | 100% |  |  |
| 149 |  | RF 22 – Gerenciar linhas | 1d | 2018-07-06 A | 2018-07-09 A |  | 100% |  |  |
| 150 |  | RF 09 – Selecionar raio de distância para obter estabelecimentos localizados na área | 1d | 2018-07-09 A | 2018-07-10 A |  | 100% |  |  |
| 151 |  | RF 23 – Gerenciar cadastro de consumidor e/ou estabelecimento | 1d | 2018-07-12 A | 2018-07-13 A |  | 100% |  |  |
| 152 |  | RF 07 – Avaliar estabelecimento | 1d | 2018-07-16 A | 2018-07-17 A |  | 100% |  |  |
| 153 |  | RF 08 – Editar avaliação do estabelecimento | 1d | 2018-07-20 A | 2018-07-23 A |  | 100% |  |  |
| 154 |  | Revisar código Back-End | 4d | 2018-08-20 A | 2018-08-24 | 145 | 12% | 49.19d | finish no earlier than 2014-04-02 |
| 155 |  | Alterar código Back-End | 8d | 2018-08-27 A | 2018-09-06 | 154 | 15% | 46.99d | finish no earlier than 2014-04-03 |
| 156 |  | Fase 3 - Término | 0d | 2018-09-08 | 2018-09-08 |  |  | 46.88d | start no earlier than 2018-09-08 |
| 157 | FAI-PFC-10 | **FASE 4** | 47d | 2018-09-08 A | 2018-11-10 | 155 | 100% |  |  |
| 158 | FAI-PFC-10.10 | **Documentação** | 15d | 2018-09-08 A | 2018-09-28 A | 155 | 100% |  |  |
| 159 | FAI-PFC-10.10.10 | **Correção Fase 3** | 5d | 2018-09-08 A | 2018-09-14 A | 155 | 100% |  |  |
| 160 |  | Corrigir texto do Capítulo 2 | 1d | 2018-09-08 A | 2018-09-10 A |  | 100% |  |  |
| 161 |  | Corrigir texto do Capítulo 3 | 1d | 2018-09-10 A | 2018-09-11 A | 160 | 100% |  |  |
| 162 |  | Corrigir texto do Capítulo 4 | 1d | 2018-09-11 A | 2018-09-12 A | 161 | 100% |  |  |
| 163 |  | Corrigir texto do Capítulo 5 | 1d | 2018-09-12 A | 2018-09-13 A | 162 | 100% |  |  |
| 164 |  | Corrigir texto do Capítulo 6 | 1d | 2018-09-13 A | 2018-09-14 A | 163 | 100% |  |  |
| 165 | FAI-PFC-10.10.11 | **Resumo** | 2d | 2018-09-14 A | 2018-09-18 |  | 100% |  |  |
| 166 |  | Elaborar Resumo do projeto | 1d | 2018-09-14 A | 2018-09-17 A |  | 100% |  |  |
| 167 |  | Revisar Resumo | 0.12d | 2018-09-14 A | 2018-09-14 A |  | 100% |  |  |
| 168 | FAI-PFC-10.10.12 | **Arquitetura e Projeto** | 1.06d | 2018-09-14 A | 2018-09-17 A |  | 100% |  |  |
| 169 |  | Criar Análise de Complexidade Algorítmica | 1d | 2018-09-14 A | 2018-09-17 A | 164 | 100% |  |  |
| 170 |  | Revisar Análise de Complexidade | 0.06d | 2018-09-17 A | 2018-09-17 A | 169 | 100% |  |  |
| 171 | 7.1.4 | **Plano de Testes** | 4d | 2018-09-18 A | 2018-09-24 A |  | 100% |  |  |
| 172 |  | Criar Plano de Testes | 1d | 2018-09-18 A | 2018-09-19 A |  | 100% |  |  |
| 173 |  | Revisar Plano de Testes | 1d | 2018-09-19 A | 2018-09-20 A | 172 | 100% |  |  |
| 174 |  | Alterar Plano de Testes | 1d | 2018-09-20 A | 2018-09-21 A | 173 | 100% |  |  |
| 175 |  | Codificar Plano de Testes | 1d | 2018-09-18 A | 2018-09-19 A | 172 | 100% |  |  |
| 176 |  | Criar Capítulo 7 | 1d | 2018-09-18 A | 2018-09-24 A | 174 | 100% |  |  |
| 177 | 7.1.5 | **Plano de Implantação** | 2d | 2018-09-24 A | 2018-09-26 A |  | 100% |  |  |
| 178 |  | Criar Plano de Implantação | 1d | 2018-09-24 A | 2018-09-25 A |  | 100% |  |  |
| 179 |  | Revisar Plano de Implantação | 1d | 2018-09-24 A | 2018-09-25 A |  | 100% |  |  |
| 180 |  | Alterar Plano de Implantação | 1d | 2018-09-24 A | 2018-09-25 A |  | 100% |  |  |
| 181 |  | Criar Capítulo 8 | 1d | 2018-09-25 A | 2018-09-26 A | 180 | 100% |  |  |
| 182 | 7.1.6 | **Conclusão** | 2d | 2018-09-26 A | 2018-09-28 A |  | 100% |  |  |
| 183 |  | Criar a Conclusão do projeto | 1d | 2018-09-26 A | 2018-09-27 A |  | 100% |  |  |
| 184 |  | Revisar Conclusão do projeto | 1d | 2018-09-26 A | 2018-09-27 A |  | 100% |  |  |
| 185 |  | Alterar Conclusão do projeto | 1d | 2018-09-26 A | 2018-09-27 A |  | 100% |  |  |
| 186 |  | Criar Capítulo 9 | 1d | 2018-09-27 A | 2018-09-28 A | 185 | 100% |  |  |
| 187 | FAI-PFC-10.11 | **Construção** | 34d | 2018-09-25 A | 2018-11-10 |  | 100% |  |  |
| 188 | FAI-PFC-10.11.10 | **Código Front-End** | 33d | 2018-09-25 A | 2018-11-09 |  | 100% |  |  |
| 189 |  | Codificar código Front-End | 5d | 2018-09-25 A | 2018-10-02 A |  | 100% |  |  |
| 190 |  | Revisar código Front-End | 5d | 2018-10-16 A | 2018-10-23 A | 189 | 100% |  |  |
| 191 |  | Alterar código Front-End | 5d | 2018-10-16 A | 2018-10-23 A | 190 | 100% |  |  |
| 192 | FAI-PFC-10.11.11 | **Código Back-End** | 33d | 2018-09-25 A | 2018-11-09 |  | 100% |  |  |
| 193 | FAI-PFC-10.11.11.10 | **Codificar código Back-End** | 33d | 2018-09-25 A | 2018-11-09 |  | 100% |  |  |
| 194 |  | RF 13 – Marcar uma lista de compras como favorita | 1.6d | 2018-09-25 A | 2018-09-26 A |  | 100% |  |  |
| 195 |  | RF 14 – Apresentar produtos ofertados em promoção | 1.33d | 2018-09-28 A | 2018-10-01 A |  | 100% |  |  |
| 196 |  | RF 15 – Pesquisar produto | 1.33d | 2018-10-03 A | 2018-10-04 A |  | 100% |  |  |
| 197 |  | RF 11 – Comparar lista de compras | 0.5d | 2018-10-04 A | 2018-10-04 A |  | 100% |  |  |
| 198 |  | RF 21 – Realizar cotação de produtos | 1d | 2018-10-05 A | 2018-10-08 A |  | 100% |  |  |
| 199 |  | RF 20 – Visualizar dashboard | 1.6d | 2018-10-08 A | 2018-10-09 A |  | 100% |  |  |
| 200 |  | Revisar código Back-End | 2.12d | 2018-10-16 A | 2018-10-18 A |  | 100% |  |  |
| 201 |  | Alterar código Back-End | 2d | 2018-10-16 A | 2018-10-18 A |  | 100% |  |  |
| 202 |  | Fase 4 - Término | 0d | 2018-11-10 | 2018-11-10 |  |  | 0.88d | start no earlier than 2018-11-10 |
| 203 |  | Final do PFC | 0d | 2018-11-10 | 2018-11-10 | 56, 114, 156, 202 |  |  |  |

## Version 2 (data date 2017-02-01, saved 2018-11-08)

Note of the change: Merge branch 'master' of https://github.com/ezmart/Ezmart

Last finish stays 2018-11-10. Complete tasks 111 → 106.

Changed:

| ID | Task | Start | Finish | Complete | Total float |
| --- | --- | --- | --- | --- | --- |
| 2 | **Comunicação** |  |  | 82% → 83% |  |
| 57 | **FASE 2** |  |  | 64% → 57% |  |
| 58 | **Documentação** |  | 2018-05-02 A → 2018-05-02 | 100% → 67% | none → 44d |
| 71 | **Revisão do documento** |  | 2018-05-02 A → 2018-05-02 | 100% → 18% | none → 44d |
| 72 | Revisar documento |  | 2018-05-01 A → 2018-05-01 | 100% → 22% | none → 44d |
| 73 | Alterar documento | 2018-05-01 A → 2018-05-01 | 2018-05-02 A → 2018-05-02 | 100% → 0% | none → 44d |
| 74 | **Modelagem** |  | 2018-05-01 A → 2018-05-01 | 100% → 80% | none → 0d |
| 90 | **Visão dos Dados** |  | 2018-04-26 A → 2018-04-26 | 100% → 48% | none → 0d |
| 91 | Criar Modelo Operacional |  | 2018-04-25 A → 2018-04-25 | 100% → 96% |  |
| 92 | Criar Dicionário de Dados do Modelo Operacional | 2018-04-25 A → 2018-04-25 | 2018-04-26 A → 2018-04-26 | 100% → 0% |  |
| 93 | **Projeto de Sistemas Distribuídos** | 2018-04-27 A → 2018-04-27 | 2018-05-01 A → 2018-05-01 | 100% → 0% |  |
| 94 | Criar Procedimentos para Tratamento dos Desafios | 2018-04-27 A → 2018-04-27 | 2018-04-30 A → 2018-04-30 | 100% → 0% |  |
| 95 | Descrever tecnologias e Arquiteturas de Distribuição | 2018-04-30 A → 2018-04-30 | 2018-05-01 A → 2018-05-01 | 100% → 0% |  |
| 96 | **Construção** |  |  | 45% → 48% |  |
| 101 | **Código Front-End** |  |  | 26% → 50% |  |
| 102 | Codificar Front-End |  | 2018-04-20 A | 33% → 100% |  |
| 103 | Revisar código Front-End | 2018-05-25 A → 2018-04-20 (-35d) | 2018-06-01 → 2018-04-27 (-35d) | 27% → 0% | 110.21d → 133.88d |
| 104 | Alterar código Front-End | 2018-06-01 A → 2018-04-27 (-35d) | 2018-06-15 → 2018-05-11 (-35d) | 13% → 0% | 108.88d → 133.88d |
| 105 | **Código Back-End** |  |  | 63% → 40% |  |
| 106 | **Criar código Back-End** |  | 2018-04-10 A | 99% → 100% | 0d → none |
| 112 | Revisar código Back-End | 2018-06-11 A → 2018-04-10 (-62d) | 2018-06-18 → 2018-04-17 (-62d) | 53% → 0% | 3d → 44d |
| 113 | Alterar código Back-End | 2018-06-18 A → 2018-04-17 (-62d) | 2018-06-30 → 2018-05-01 (-60d) | 30% → 0% | 0d → 44d |
