# Projeto EzMart

How a schedule from MS Project changed from version to version. A marks actual dates.

## Version 1 (data date 2017-02-01, saved 2018-08-25)

Note of the change: EAP ARRUMADA

| ID | WBS | Task | Duration | Start | Finish | Predecessors | Complete | Total float | Constraint |
| --- | --- | --- | --- | --- | --- | --- | --- | --- | --- |
| 1 | FAI-PFC-14 | **FASE 1** | 35d | 2018-02-19 A | 2018-04-07 |  | 67% |  |  |
| 2 | FAI-PFC-14.16 | **Comunicação** | 15d | 2018-02-19 A | 2018-03-09 |  | 30% |  |  |
| 3 | FAI-PFC-14.16.4 | **Requisitos Funcionais** | 11d | 2018-02-19 | 2018-03-06 A |  | 100% |  |  |
| 4 | FAI-PFC-14.16.4.4 | **Elaborar Requisitos Funcionais** | 1d | 2018-03-03 A | 2018-03-05 A |  | 100% |  |  |
| 5 |  | Revisar Requisitos Funcionais | 1d | 2018-03-03 A | 2018-03-05 A |  | 100% |  | start no earlier than 2018-03-01 |
| 6 |  | Alterar Requisitos Funcionais | 1d | 2018-03-05 A | 2018-03-06 A | 5 | 100% |  |  |
| 7 | FAI-PFC-14.16.5 | **Requisitos Não Funcionais** | 6d | 2018-02-19 A | 2018-02-26 |  | 6% |  |  |
| 8 |  | Elaborar requisitos não funcionais | 2d | 2018-02-19 A | 2018-02-20 |  | 6% | 0.12d | finish no earlier than 2018-02-20 |
| 9 |  | Revisar requisitos não funcionais | 2d | 2018-02-21 A | 2018-02-22 | 8 | 6% | 0.25d | finish no earlier than 2018-02-22 |
| 10 |  | Alterar requisitos não funcionais | 1.88d | 2018-02-23 A | 2018-02-26 | 9 | 7% | 0d | finish no earlier than 2018-02-26 |
| 11 | FAI-PFC-14.17 | **Modelagem** | 7d | 2018-02-26 | 2018-03-07 | 10 | 33% |  |  |
| 12 | FAI-PFC-14.17.10 | **Casos de Uso** | 7d | 2018-02-26 | 2018-03-07 |  | 47% |  |  |
| 13 |  | Criar diagrama dos Casos de Uso | 2d | 2018-02-28 A | 2018-03-01 | 10 | 38% | 186d | finish no earlier than 2018-03-01 |
| 14 |  | Revisar diagrama dos Casos de Uso | 1d | 2018-03-05 A | 2018-03-06 A | 13 | 100% |  | start no earlier than 2018-03-05 |
| 15 |  | Alterar diagrama dos Casos de Uso | 1d | 2018-03-06 A | 2018-03-07 | 14 | 13% | 0d |  |
| 16 | FAI-PFC-14.17.11 | **MER** | 7d | 2018-02-26 | 2018-03-07 |  | 19% |  |  |
| 17 |  | Criar Modelo Entidade-Relacionamento | 2d | 2018-02-27 A | 2018-02-28 | 10 | 19% | 0.38d |  |
| 18 |  | Revisar Modelo Entidade-Relacionamento | 1d | 2018-03-01 A | 2018-03-02 | 17 | 25% | 1d | start no earlier than 2018-03-01 |
| 19 |  | Alterar Modelo Entidade-Relacionamento | 1d | 2018-03-02 A | 2018-03-05 | 18 | 13% | 184.88d | start no earlier than 2018-02-05 |
| 20 | FAI-PFC-14.18 | **Documentação** | 12d | 2018-03-07 A | 2018-03-23 |  | 87% |  |  |
| 21 | FAI-PFC-14.18.21 | **Capitulo 1** | 10d | 2018-03-07 A | 2018-03-21 |  | 63% |  |  |
| 22 |  | Elaborar capitulo 1 | 2d | 2018-03-07 A | 2018-03-09 |  | 94% | 2d |  |
| 23 |  | Revisar capitulo 1 | 2.38d | 2018-03-09 A | 2018-03-13 | 22 | 84% | 0.12d |  |
| 24 |  | Alterar capitulo 1 | 2d | 2018-03-13 A | 2018-03-15 | 23 | 6% | 4d |  |
| 25 | FAI-PFC-14.18.22 | **Capitulo 2** | 10d | 2018-03-07 A | 2018-03-21 |  | 97% |  |  |
| 26 |  | Elaborar capitulo 2 | 2d | 2018-03-07 A | 2018-03-09 A |  | 100% |  |  |
| 27 |  | Revisar capitulo 2 | 1d | 2018-03-12 A | 2018-03-13 | 26 | 88% | 178.88d | start no earlier than 2018-03-12 |
| 28 |  | Alterar capitulo 2 | 1d | 2018-03-15 A | 2018-03-16 A | 27 | 100% |  | start no earlier than 2018-03-15 |
| 29 | FAI-PFC-14.18.23 | **Capitulo 3** | 10d | 2018-03-07 A | 2018-03-21 |  | 97% |  |  |
| 30 |  | Elaborar capitulo 3 | 2d | 2018-03-07 A | 2018-03-09 A |  | 100% |  |  |
| 31 |  | Revisar capitulo 3 | 1d | 2018-03-12 A | 2018-03-13 | 30 | 88% | 178.88d | start no earlier than 2018-03-12 |
| 32 |  | Alterar capitulo 3 | 1d | 2018-03-14 A | 2018-03-15 A | 31 | 100% |  | start no earlier than 2018-03-14 |
| 33 | FAI-PFC-14.18.24 | **Capitulo 4** | 10d | 2018-03-07 A | 2018-03-21 |  | 100% |  |  |
| 34 |  | Elaborar capitulo 4 | 1d | 2018-03-07 A | 2018-03-08 A |  | 100% |  |  |
| 35 |  | Revisar capitulo 4 | 1d | 2018-03-12 A | 2018-03-13 A | 34 | 100% |  | start no earlier than 2018-03-12 |
| 36 |  | Alterar capitulo 4 | 1d | 2018-03-14 A | 2018-03-15 A | 35 | 100% |  | start no earlier than 2018-03-14 |
| 37 | FAI-PFC-14.18.25 | **Capitulo 5** | 10d | 2018-03-07 A | 2018-03-21 |  | 100% |  |  |
| 38 |  | Elaborar capitulo 5 | 1d | 2018-03-07 A | 2018-03-08 A |  | 100% |  |  |
| 39 |  | Revisar capitulo 5 | 1d | 2018-03-12 A | 2018-03-13 A | 38 | 100% |  | start no earlier than 2018-03-12 |
| 40 |  | Alterar capitulo 5 | 1d | 2018-03-14 A | 2018-03-15 A | 39 | 100% |  | start no earlier than 2018-03-14 |
| 41 | FAI-PFC-14.19 | **Construção** | 20d | 2018-03-12 A | 2018-04-07 | 2 | 72% |  |  |
| 42 | FAI-PFC-14.19.15 | **Banco de Dados** | 5d | 2018-03-12 A | 2018-03-19 A | 2 | 100% |  |  |
| 43 |  | Criar Banco de Dados | 2d | 2018-03-12 A | 2018-03-14 A |  | 100% |  |  |
| 44 |  | Revisar Banco de Dados | 1d | 2018-03-14 A | 2018-03-15 A | 43 | 100% |  |  |
| 45 |  | Alterar Banco de Dados | 1d | 2018-03-16 A | 2018-03-19 A | 44 | 100% |  | start no earlier than 2018-03-16 |
| 46 | FAI-PFC-14.19.16 | **Código Front-End** | 14d | 2018-03-20 A | 2018-04-07 | 42 | 44% |  |  |
| 47 |  | Codificar Front-End | 6d | 2018-03-20 A | 2018-03-28 | 42 | 31% | 0.38d |  |
| 48 |  | Revisar código Front-End | 3d | 2018-03-28 A | 2018-04-02 | 47 | 13% | 5d |  |
| 49 |  | Alterar código Front-End | 3d | 2018-04-03 A | 2018-04-06 A | 48 | 100% |  | finish no earlier than 2018-04-05 |
| 50 | FAI-PFC-14.19.17 | **Código Back-End** | 14d | 2018-03-20 A | 2018-04-07 | 42 | 86% |  |  |
| 51 |  | Criar código Back-End | 6d | 2018-03-20 A | 2018-03-28 | 42 | 65% | 8d |  |
| 52 |  | Revisar código Back-End | 5d | 2018-03-21 A | 2018-03-28 A | 51 | 100% |  |  |
| 53 |  | Alterar código Back-End | 4d | 2018-03-22 A | 2018-03-28 A | 52 | 100% |  |  |
| 54 |  | Fase I - Término | 0d | 2018-04-07 A | 2018-04-07 A |  | 100% |  | start no earlier than 2018-04-07 |
| 55 | FAI-PFC-6 | **FASE 2** | 58d | 2018-04-12 | 2018-06-30 | 54 | 78% |  |  |
| 56 | 4 | **Documentação** | 35d | 2018-04-12 | 2018-05-30 | 54 | 92% |  |  |
| 57 | 4.4 | **Correção Fase 1** | 10d | 2018-04-13 A | 2018-04-27 | 54 | 100% |  |  |
| 58 |  | Capitulo 1 | 2d | 2018-04-13 A | 2018-04-17 A | 54 | 100% |  |  |
| 59 |  | Capitulo 2 | 1.25d | 2018-04-18 A | 2018-04-19 A |  | 100% |  | start no earlier than 2018-04-18 |
| 60 |  | Capitulo 3 | 1d | 2018-04-19 A | 2018-04-20 A | 59 | 100% |  |  |
| 61 |  | Capitulo 4 | 1d | 2018-04-20 A | 2018-04-23 A | 60 | 100% |  |  |
| 62 |  | Capitulo 5 | 2d | 2018-04-23 A | 2018-04-25 A | 61 | 100% |  |  |
| 63 | 3.1.2 | **Gerência de Projetos** | 5d | 2018-04-30 A | 2018-05-07 | 57 | 71% |  |  |
| 64 |  | Criar Gestão dos Riscos | 1d | 2018-04-30 A | 2018-05-01 |  | 63% | 4d |  |
| 65 |  | Criar Gestão da Qualidade | 1d | 2018-05-01 A | 2018-05-02 |  | 50% | 3d |  |
| 66 |  | Criar Gestão da Integração | 1d | 2018-05-02 A | 2018-05-03 A |  | 100% |  |  |
| 67 | 4.6 | **Especificação e Análise dos Requisitos** | 1d | 2018-05-08 A | 2018-05-09 | 63 | 50% |  |  |
| 68 |  | Criar Métricas para Estimativa do Esforço | 1d | 2018-05-08 A | 2018-05-09 |  | 50% | 0d |  |
| 69 | 3.1.4 | **Revisão do documento** | 6d | 2018-05-10 | 2018-05-17 | 67 | 100% |  |  |
| 70 |  | Revisar documento | 5d | 2018-05-08 A | 2018-05-13 A |  | 100% |  | finish no earlier than 2018-05-13 |

| ID | WBS | Task | Duration | Start | Finish | Predecessors | Complete | Total float | Constraint |
| --- | --- | --- | --- | --- | --- | --- | --- | --- | --- |
| 71 |  | Alterar documento | 1d | 2018-05-14 A | 2018-05-15 A |  | 100% |  | start no earlier than 2018-05-14 |
| 72 | FAI-PFC-6.5 | **Modelagem** | 41d | 2018-04-25 | 2018-06-20 | 54 | 100% |  |  |
| 73 | FAI-PFC-6.5.5 | **Correção dos Casos de Uso** | 3d | 2018-04-27 A | 2018-05-02 A |  | 100% |  |  |
| 74 |  | Corrigir Casos de Uso | 1d | 2018-04-27 A | 2018-04-30 A |  | 100% |  |  |
| 75 |  | Revisar correção de Casos de Uso | 1d | 2018-04-30 A | 2018-05-01 A | 74 | 100% |  |  |
| 76 |  | Alterar correção dos Casos de Uso | 1d | 2018-05-01 A | 2018-05-02 A | 75 | 100% |  |  |
| 77 | FAI-PFC-6.5.6 | **Correção do MER** | 3d | 2018-04-27 A | 2018-05-02 A | 57 | 100% |  |  |
| 78 |  | Corrigir MER | 1d | 2018-04-27 A | 2018-04-30 A |  | 100% |  |  |
| 79 |  | Revisar correção do MER | 1d | 2018-04-30 A | 2018-05-01 A | 78 | 100% |  |  |
| 80 |  | Alterar correção do MER | 1d | 2018-05-01 A | 2018-05-02 A | 79 | 100% |  |  |
| 81 | 3.2.3 | **Visão Estrutural** | 3d | 2018-04-27 A | 2018-05-02 A | 57 | 100% |  |  |
| 82 |  | Criar Diagrama de Pacotes | 1d | 2018-04-27 A | 2018-04-30 A |  | 100% |  |  |
| 83 |  | Criar Diagrama de Classes | 1d | 2018-04-30 A | 2018-05-01 A | 82 | 100% |  |  |
| 84 |  | Criar Diagrama de Objetos | 1d | 2018-05-01 A | 2018-05-02 A | 83 | 100% |  |  |
| 85 | 3.2.4 | **Visão Comportamental** | 3d | 2018-05-02 A | 2018-05-07 | 57 | 100% |  |  |
| 86 |  | Criar Projeto das Interações | 1d | 2018-05-02 A | 2018-05-03 A |  | 100% |  |  |
| 87 |  | Criar Diagrama de Atividades | 1.25d | 2018-05-03 A | 2018-05-04 A | 86 | 100% |  |  |
| 88 | 3.2.5 | **Visão dos Dados** | 1d | 2018-05-04 | 2018-05-07 | 57 | 100% |  |  |
| 89 |  | Criar Modelo Operacional | 1d | 2018-04-27 A | 2018-04-30 A |  | 100% |  |  |
| 90 |  | Criar Dicionário de Dados do Modelo Operacional | 1.12d | 2018-04-30 A | 2018-05-01 A | 89 | 100% |  |  |
| 91 | 3.2.6 | **Projeto de Sistemas Distribuídos** | 4d | 2018-05-02 A | 2018-05-07 A |  | 100% |  |  |
| 92 |  | Criar Procedimentos para Tratamento dos Desafios | 1d | 2018-05-02 A | 2018-05-03 A |  | 100% |  |  |
| 93 |  | Descrever tecnologias e Arquiteturas de Distribuição | 1.25d | 2018-05-04 A | 2018-05-07 A | 92 | 100% |  |  |
| 94 | FAI-PFC-6.6 | **Construção** | 47d | 2018-04-27 | 2018-06-30 |  | 73% |  |  |
| 95 | FAI-PFC-6.6.4 | **Correção do Banco de Dados** | 4d | 2018-04-27 A | 2018-05-02 |  | 100% |  |  |
| 96 |  | Corrigir Banco de Dados | 2d | 2018-04-27 A | 2018-05-01 A |  | 100% |  | finish no earlier than 2014-03-27 |
| 97 |  | Revisar correção do Banco de Dados | 2d | 2018-04-27 A | 2018-05-01 A | 96 | 100% |  | start no earlier than 2014-03-28 |
| 98 |  | Alterar correção do Banco de Dados | 2.12d | 2018-04-27 A | 2018-05-01 A | 97 | 100% |  | start no earlier than 2014-03-31 |
| 99 | FAI-PFC-6.6.5 | **Código Front-End** | 67d | 2018-04-02 | 2018-06-30 | 95 | 60% |  |  |
| 100 |  | Codificar Front-End | 40d | 2018-04-03 A | 2018-05-25 |  | 36% | 123.88d | start no earlier than 2018-04-02 |
| 101 |  | Revisar código Front-End | 7d | 2018-05-25 A | 2018-06-05 A | 100 | 100% |  | finish no earlier than 2014-04-02 |
| 102 |  | Alterar código Front-End | 17d | 2018-06-05 A | 2018-06-28 A | 101 | 100% |  | finish no earlier than 2014-04-03 |
| 103 | FAI-PFC-6.6.6 | **Código Back-End** | 67d | 2018-04-02 | 2018-06-30 |  | 84% |  |  |
| 104 |  | Criar código Back-End | 40d | 2018-04-03 A | 2018-05-25 |  | 74% | 123.88d | start no earlier than 2018-04-03 |
| 105 |  | Revisar código Back-End | 7d | 2018-05-29 A | 2018-06-07 A |  | 100% |  | start no earlier than 2018-05-29 |
| 106 |  | Alterar código Back-End | 17d | 2018-06-07 A | 2018-06-30 A | 105 | 100% |  |  |
| 107 |  | Fase 2 - Término | 0d | 2018-06-30 | 2018-06-30 |  |  | 0d | start no earlier than 2018-06-30 |
| 108 | FAI-PFC-8 | **FASE 3** | 52d | 2018-06-30 | 2018-09-08 | 107 | 77% |  |  |
| 109 | FAI-PFC-8.7 | **Documentação** | 26d | 2018-06-30 | 2018-08-06 A | 107 | 100% |  |  |
| 110 | FAI-PFC-8.7.7 | **Correção Fase 2** | 7d | 2018-06-30 | 2018-07-10 | 107 | 100% |  |  |
| 111 |  | Capitulo 2 | 0.38d | 2018-07-02 A | 2018-07-02 A | 107 | 100% |  |  |
| 112 |  | Capitulo 3 | 1d | 2018-07-02 A | 2018-07-03 A | 111 | 100% |  | start no earlier than 2018-06-04 |
| 113 |  | Capitulo 4 | 1d | 2018-07-03 A | 2018-07-04 A | 112 | 100% |  | start no earlier than 2018-06-04 |
| 114 |  | Capitulo 5 | 1d | 2018-07-04 A | 2018-07-05 A | 113 | 100% |  | start no earlier than 2018-06-04 |
| 115 |  | Capitulo 6 | 1d | 2018-07-02 A | 2018-07-03 A | 114 | 100% |  |  |
| 116 | FAI-PFC-8.7.8 | **Capitulo 6** | 3d | 2018-07-30 A | 2018-08-02 | 115 | 100% |  |  |
| 117 |  | Estrutura fisica do banco de dados | 2d | 2018-07-30 A | 2018-08-01 A |  | 100% |  | start no earlier than 2018-07-30 |
| 118 |  | Design Patterns | 1d | 2018-07-30 A | 2018-07-31 A |  | 100% |  |  |
| 119 |  | Convenções e guias para a codificação | 1d | 2018-07-31 A | 2018-08-01 A | 118 | 100% |  |  |
| 120 |  | Aspectos visuais da interface do usuário | 1d | 2018-07-30 A | 2018-07-31 A |  | 100% |  |  |
| 121 |  | Heuristica e usabilidade | 1d | 2018-07-30 A | 2018-07-31 A | 119 | 100% |  |  |
| 122 | FAI-PFC-8.8.9 | **Revisão do documento** | 3d | 2018-08-01 A | 2018-08-06 A | 121 | 100% |  |  |
| 123 |  | Revisar documento | 3d | 2018-08-01 A | 2018-08-06 A | 119 | 100% |  |  |
| 124 |  | Alterar documento | 1d | 2018-08-03 A | 2018-08-06 A | 123 | 100% |  |  |
| 125 | FAI-PFC-8.8 | **Modelagem** | 3d | 2018-08-03 A | 2018-08-08 |  | 100% |  |  |
| 126 | FAI-PFC-8.8.7 | **Casos de uso** | 3d | 2018-08-03 A | 2018-08-08 |  | 100% |  |  |
| 127 |  | Revisar | 1d | 2018-08-03 A | 2018-08-06 A |  | 100% |  | start no earlier than 2018-08-03 |
| 128 |  | Alterar | 1d | 2018-08-06 A | 2018-08-07 A | 127 | 100% |  |  |
| 129 | FAI-PFC-8.9 | **Construção** | 52d | 2018-06-30 | 2018-09-08 | 107 | 73% |  |  |
| 130 | FAI-PFC-8.9.7 | **Código Front-End** | 51d | 2018-07-02 A | 2018-09-08 | 107 | 69% |  |  |
| 131 |  | Codificar código Front-End | 33d | 2018-07-02 A | 2018-08-16 | 107 | 68% | 63.88d | start no earlier than 2018-07-02 |
| 132 |  | Revisar código Front-End | 5d | 2018-08-17 A | 2018-08-24 A | 131 | 100% |  | start no earlier than 2018-08-17 |
| 133 |  | Alterar código Front-End | 11d | 2018-08-27 A | 2018-09-08 | 132 | 57% | 46d | finish no earlier than 2018-09-08 |
| 134 | FAI-PFC-8.9.8 | **Código Back-End** | 51d | 2018-06-30 | 2018-09-08 | 107 | 77% |  |  |
| 135 |  | Codificar código Back-End | 34d | 2018-07-02 A | 2018-08-17 | 107 | 66% | 62.88d | start no earlier than 2018-07-02 |
| 136 |  | Revisar código Back-End | 4d | 2018-08-17 A | 2018-08-23 A | 135 | 100% |  | finish no earlier than 2014-04-02 |
| 137 |  | Alterar código Back-End | 12d | 2018-08-23 A | 2018-09-08 A | 136 | 100% |  | finish no earlier than 2014-04-03 |
| 138 |  | Fase 3 - Término | 0d | 2018-09-08 | 2018-09-08 |  |  | 46.88d | start no earlier than 2018-09-08 |
| 139 | FAI-PFC-10 | **FASE 4** | 47d | 2018-09-08 | 2018-11-10 |  |  |  |  |
| 140 | FAI-PFC-10.10 | **Entrega A4** | 1d | 2018-09-08 | 2018-09-10 |  |  | 45.88d |  |

| ID | WBS | Task | Duration | Start | Finish | Total float | Constraint |
| --- | --- | --- | --- | --- | --- | --- | --- |
| 141 | FAI-PFC-10.10.10 | **Pacote de Trabalho A4.1** | 1d | 2018-09-08 | 2018-09-10 | 45.88d |  |
| 142 |  | Atividade A4.1.1 | 1d | 2018-09-08 | 2018-09-10 | 45.88d |  |
| 143 |  | Atividade A4.1.2 | 1d | 2018-09-08 | 2018-09-10 | 45.88d |  |
| 144 |  | Atividade A4.1.3 | 1d | 2018-09-08 | 2018-09-10 | 45.88d |  |
| 145 | FAI-PFC-10.10.11 | **Pacote de Trabalho A4.2** | 1d | 2018-09-08 | 2018-09-10 | 45.88d |  |
| 146 |  | Atividade A4.2.1 | 1d | 2018-09-08 | 2018-09-10 | 45.88d |  |
| 147 |  | Atividade A4.2.2 | 1d | 2018-09-08 | 2018-09-10 | 45.88d |  |
| 148 |  | Atividade A4.2.3 | 1d | 2018-09-08 | 2018-09-10 | 45.88d |  |
| 149 | FAI-PFC-10.10.12 | **Pacote de Trabalho A4.3** | 1d | 2018-09-08 | 2018-09-10 | 45.88d |  |
| 150 |  | Atividade A4.3.1 | 1d | 2018-09-08 | 2018-09-10 | 45.88d |  |
| 151 |  | Atividade A4.3.2 | 1d | 2018-09-08 | 2018-09-10 | 45.88d |  |
| 152 |  | Atividade A4.3.3 | 1d | 2018-09-08 | 2018-09-10 | 45.88d |  |
| 153 | FAI-PFC-10.11 | **Entrega B4** | 1d | 2018-09-08 | 2018-09-10 | 45.88d |  |
| 154 | FAI-PFC-10.11.10 | **Pacote de Trabalho B4.1** | 1d | 2018-09-08 | 2018-09-10 | 45.88d |  |
| 155 |  | Atividade B4.1.1 | 1d | 2018-09-08 | 2018-09-10 | 45.88d |  |
| 156 |  | Atividade B4.1.2 | 1d | 2018-09-08 | 2018-09-10 | 45.88d |  |
| 157 |  | Atividade B4.1.3 | 1d | 2018-09-08 | 2018-09-10 | 45.88d |  |
| 158 | FAI-PFC-10.11.11 | **Pacote de Trabalho B4.2** | 1d | 2018-09-08 | 2018-09-10 | 45.88d |  |
| 159 |  | Atividade B4.2.1 | 1d | 2018-09-08 | 2018-09-10 | 45.88d |  |
| 160 |  | Atividade B4.2.2 | 1d | 2018-09-08 | 2018-09-10 | 45.88d |  |
| 161 |  | Atividade B4.2.3 | 1d | 2018-09-08 | 2018-09-10 | 45.88d |  |
| 162 | FAI-PFC-10.11.12 | **Pacote de Trabalho B4.3** | 1d | 2018-09-08 | 2018-09-10 | 45.88d |  |
| 163 |  | Atividade B4.3.1 | 1d | 2018-09-08 | 2018-09-10 | 45.88d |  |
| 164 |  | Atividade B4.3.2 | 1d | 2018-09-08 | 2018-09-10 | 45.88d |  |
| 165 |  | Atividade B4.3.3 | 1d | 2018-09-08 | 2018-09-10 | 45.88d |  |
| 166 | FAI-PFC-10.12 | **Entrega C4** | 1d | 2018-09-08 | 2018-09-10 | 45.88d |  |
| 167 | FAI-PFC-10.12.10 | **Pacote de Trabalho C4.1** | 1d | 2018-09-08 | 2018-09-10 | 45.88d |  |
| 168 |  | Atividade C4.1.1 | 1d | 2018-09-08 | 2018-09-10 | 45.88d | finish no earlier than 2014-03-27 |
| 169 |  | Atividade C4.1.2 | 1d | 2018-09-08 | 2018-09-10 | 45.88d | start no earlier than 2014-03-28 |
| 170 |  | Atividade C4.1.3 | 1d | 2018-09-08 | 2018-09-10 | 45.88d | start no earlier than 2014-03-31 |
| 171 | FAI-PFC-10.12.11 | **Pacote de Trabalho C3.2** | 1d | 2018-09-08 | 2018-09-10 | 45.88d |  |
| 172 |  | Atividade C4.2.1 | 1d | 2018-09-08 | 2018-09-10 | 45.88d | finish no earlier than 2014-04-01 |
| 173 |  | Atividade C4.2.1 | 1d | 2018-09-08 | 2018-09-10 | 45.88d | finish no earlier than 2014-04-02 |
| 174 |  | Atividade C4.2.3 | 1d | 2018-09-08 | 2018-09-10 | 45.88d | finish no earlier than 2014-04-03 |
| 175 | FAI-PFC-10.12.12 | **Pacote de Trabalho C4.3** | 1d | 2018-09-08 | 2018-09-10 | 45.88d |  |
| 176 |  | Atividade C4.3.1 | 1d | 2018-09-08 | 2018-09-10 | 45.88d |  |
| 177 |  | Atividade C4.3.2 | 1d | 2018-09-08 | 2018-09-10 | 45.88d |  |
| 178 |  | Atividade C4.3.3 | 1d | 2018-09-08 | 2018-09-10 | 45.88d |  |
| 179 |  | Fase 4 - Término | 0d | 2018-11-10 | 2018-11-10 | 0.88d | start no earlier than 2018-11-10 |
| 180 |  | Final do PFC | 0d | 2018-11-10 | 2018-11-10 |  |  |

## Version 2 (data date 2017-02-01, saved 2018-09-15)

Note of the change: Att EAP

Last finish stays 2018-11-10. Complete tasks 67 → 69.

Added:

| ID | Task | Duration | Start | Finish | Predecessors | Constraint | Resources |
| --- | --- | --- | --- | --- | --- | --- | --- |
| 127 | Revisar Casos de uso | 1d | 2018-08-03 A | 2018-08-06 A |  | start no earlier than 2018-08-03 | Diego |
| 128 | Alterar Casos de uso | 1d | 2018-08-06 A | 2018-08-07 A | 127 |  | Diego |
| 129 | **Correção MER** | 3d | 2018-08-03 A | 2018-08-08 |  |  |  |

Changed:

| ID | Task | Total float | Other |
| --- | --- | --- | --- |
| 21 | **Capítulo 1** |  | was named Capitulo 1 |
| 22 | Elaborar Capítulo 1 |  | was named Elaborar capitulo 1 |
| 23 | Revisar Capítulo 1 | 0.12d → 0d | was named Revisar capitulo 1 |
| 24 | Alterar Capítulo 1 |  | was named Alterar capitulo 1 |
| 25 | **Capítulo 2** |  | was named Capitulo 2 |
| 26 | Elaborar Capítulo 2 |  | was named Elaborar capitulo 2 |
| 27 | Revisar Capítulo 2 |  | was named Revisar capitulo 2 |
| 28 | Alterar Capítulo 2 |  | was named Alterar capitulo 2 |
| 29 | **Capítulo 3** |  | was named Capitulo 3 |
| 30 | Elaborar Capítulo 3 |  | was named Elaborar capitulo 3 |
| 31 | Revisar Capítulo 3 |  | was named Revisar capitulo 3 |
| 32 | Alterar Capítulo 3 |  | was named Alterar capitulo 3 |
| 33 | **Capítulo 4** |  | was named Capitulo 4 |
| 34 | Elaborar Capítulo 4 |  | was named Elaborar capitulo 4 |
| 35 | Revisar Capítulo 4 |  | was named Revisar capitulo 4 |
| 36 | Alterar Capítulo 4 |  | was named Alterar capitulo 4 |
| 37 | **Capítulo 5** |  | was named Capitulo 5 |
| 38 | Elaborar Capítulo 5 |  | was named Elaborar capitulo 5 |
| 39 | Revisar Capítulo 5 |  | was named Revisar capitulo 5 |
| 40 | Alterar Capítulo 5 |  | was named Alterar capitulo 5 |
| 58 | Corrigir texto do Capítulo 1 |  | was named Capitulo 1 |
| 59 | Corrigir texto do Capítulo 2 |  | was named Capitulo 2 |
| 60 | Corrigir texto do Capítulo 3 |  | was named Capitulo 3 |
| 61 | Corrigir texto do Capítulo 4 |  | was named Capitulo 4 |
| 62 | Corrigir texto do Capítulo 5 |  | was named Capitulo 5 |
| 111 | Corrigir texto do Capítulo 2 |  | was named Capitulo 2 |
| 112 | Corrigir texto do Capítulo 3 |  | was named Capitulo 3 |
| 113 | Corrigir texto do Capítulo 4 |  | was named Capitulo 4 |
| 114 | Corrigir texto do Capítulo 5 |  | was named Capitulo 5 |
| 115 | Corrigir texto do Capítulo 6 |  | was named Capitulo 6 |
| 116 | **Capítulo 6** |  | was named Capitulo 6 |
| 117 | Criar Estrutura fisica do banco de dados |  | was named Estrutura fisica do banco de dados |
| 118 | Escrever sobre Design Patterns |  | was named Design Patterns |
| 119 | Escrever sobre Convenções e guias para a codificação |  | was named Convenções e guias para a codificação |
| 120 | Escrever sobre Aspectos visuais da interface do usuário |  | was named Aspectos visuais da interface do usuário |
| 121 | Escrever sobre Heuristica e usabilidade |  | was named Heuristica e usabilidade |
| 130 | Revisar Modelo Entidade Relacionamento |  | was named Revisar |
| 131 | Alterar Modelo Entidade Relacionamento |  | was named Alterar |
